# Metasepi Project

Schedule from Planner, 2014-05-12 to 2015-04-28.

## Calendars

- デフォルト: Mon-Fri 08:00-12:00, 13:00-17:00; Sat-Sun off.

## Schedule

| ID | WBS | Task | Type | Duration | Start | Finish | Predecessors | Constraint | Work |
| --- | --- | --- | --- | --- | --- | --- | --- | --- | --- |
| 1 | 1 | **ATS demo on tiny CPU** |  |  | 2014-05-12 | 2014-05-26 |  |  | 88h |
| 2 | 1.1 | AVR support to ATS |  |  | 2014-05-12 | 2014-05-20 |  |  | 51h |
| 3 | 1.2 | ARM support to ATS |  |  | 2014-05-20 | 2014-05-26 | 2 |  | 37h |
| 4 | 2 | **Translate ATS doc** |  |  | 2014-05-12 | 2014-08-29 |  |  | 640h |
| 5 | 2.1 | ATS2TUTORIAL |  |  | 2014-05-12 | 2014-05-26 |  |  | 88h |
| 6 | 2.2 | INT2PROGINATS |  |  | 2014-05-27 | 2014-06-20 | 5 |  | 152h |
| 7 | 2.3 | BLUISH CODER |  |  | 2014-06-23 | 2014-08-29 | 6 |  | 400h |
| 8 | 3 | **ATS Ethernet driver** |  |  | 2014-05-27 | 2014-08-29 | 5 |  | 550h |
| 9 | 3.1 | Support mbed |  |  | 2014-05-27 | 2014-07-31 |  |  | 384h |
| 10 | 3.2 | Support W5100 |  |  | 2014-08-01 | 2014-08-29 | 9 |  | 166h |
| 11 | 4 | OSC@Nagoya | milestone | 0d | 2014-07-04 | 2014-07-04 |  | must start on 2014-07-04 |  |
| 12 | 5 | OSC@Kansai | milestone | 0d | 2014-08-01 | 2014-08-01 |  | must start on 2014-08-01 |  |
| 13 | 6 | Haskell Symposium | milestone | 0d | 2014-09-04 | 2014-09-04 |  | must start on 2014-09-04 |  |
| 14 | 7 | OSC@Tokyo | milestone | 0d | 2014-10-20 | 2014-10-18 |  | must start on 2014-10-18 |  |
| 15 | 8 | **Web framework** |  |  | 2014-08-29 | 2014-12-19 | 8 |  | 640h |
| 16 | 8.1 | On POSIX |  |  | 2014-08-29 | 2014-09-26 |  |  | 160h |
| 17 | 8.2 | On mbed |  |  | 2014-09-26 | 2014-10-24 | 16 |  | 160h |
| 18 | 8.3 | Wiki application |  |  | 2014-10-24 | 2014-11-21 | 17 |  | 160h |
| 19 | 8.4 | On AVR |  |  | 2014-11-21 | 2014-12-19 | 18 |  | 160h |
| 20 | 9 | **ATS snatches NetBSD** |  |  | 2014-12-19 | 2015-01-30 | 15 |  | 240h |
| 21 | 9.1 | Setup raspberrypi |  |  | 2014-12-19 | 2015-01-09 |  |  | 120h |
| 22 | 9.2 | Choose snatch target |  |  | 2015-01-09 | 2015-01-23 | 21 |  | 80h |
| 23 | 9.3 | Setup ATS config |  |  | 2015-01-23 | 2015-01-30 | 22 |  | 40h |
| 24 | 10 | **ATS package manager** |  |  | 2015-01-30 | 2015-03-03 | 20 |  | 176h |
| 25 | 10.1 | Understand opam design |  |  | 2015-01-30 | 2015-02-20 |  |  | 120h |
| 26 | 10.2 | Get design for ATS |  |  | 2015-02-20 | 2015-03-03 | 25 |  | 56h |
| 27 | 11 | Parsec on ATS |  |  | 2015-03-03 | 2015-03-31 | 24 |  | 160h |
| 28 | 12 | ATS Windows installer |  |  | 2015-03-31 | 2015-04-28 | 27 |  | 160h |
